# Carta Gantt

Schedule from MS Project, 2023-09-21 to 2024-11-19, costs in $.

## Calendars

- Estándar: Mon-Fri 09:00-13:00, 15:00-19:00; Sat-Sun off. Exceptions (off unless hours are given): 2023-10-27 (Feriado 27 Oc tubre), 2023-11-01 (Feriado 1 Noviembre), 2023-12-08 (Feriado 8 Diciembre), 2023-12-25 (Feriado 25 Diciembre).

## Resources

| Resource | Rate |
| --- | --- |
| Ingeniero Cloud | 10000 |
| Arquitecto Cloud | 15000 |
| Analista seguridad Cloud | 10000 |
| Administrador de proyectos | 9000 |
| Ingeniero de redes | 7000 |
| Analista | 7500 |
| QA | 7500 |
| Tester | 6000 |
| Tester 2 | 6000 |
| Analista 2 | 7500 |

## Schedule

| ID | WBS | Task | Duration | Start | Finish | Predecessors | Total slack | Free slack | Constraint | Resources | Work | Cost |
| --- | --- | --- | --- | --- | --- | --- | --- | --- | --- | --- | --- | --- |
| 1 | 1 | **Infraestructura Cloud** | 299.42d? | 2023-09-21 | 2024-11-19 |  | 0d |  |  |  | 1099.67h | 9,008,325.73 |
| 2 | 1.1 | **Inicio** | 52.5d | 2023-09-21 | 2023-12-06 |  | 3d | 0d | start no earlier than 2023-09-21 |  | 167h | 1,355,499.49 |
| 3 | 1.1.1 | **Kick Off** | 4d | 2023-09-21 | 2023-09-26 |  | 3d | 0d |  |  | 16h | 139,500 |
| 4 | 1.1.1.1 | Organizar reunión | 3d | 2023-09-21 | 2023-09-25 |  | 3d | 0d |  | Administrador de proyectos [50%] | 6h | 54,000 |
| 5 | 1.1.1.2 | Realizar reunión | 1d | 2023-09-26 | 2023-09-26 | 4 | 3d |  |  | Administrador de proyectos [25%]; Analista [25%]; Analista seguridad Cloud [25%]; Arquitecto Cloud [25%]; Ingeniero Cloud [25%]; Ingeniero de redes [25%]; Analista 2 [20.8%]; QA [20.8%]; Tester [20.8%]; Tester 2 [20.8%] | 10h | 85,500 |
| 6 | 1.1.2 | **Acta de Constitución** | 16.42d | 2023-09-27 | 2023-10-19 | 3 | 3d | 0d |  |  | 40h | 334,000 |
| 7 | 1.1.2.1 | Definir objetivos y metas | 4.17d | 2023-09-27 | 2023-10-03 |  | 3d | 0d |  | Administrador de proyectos [37.5%]; Ingeniero Cloud | 8h | 76,000 |
| 8 | 1.1.2.2 | Definir restricciones | 3d | 2023-10-03 | 2023-10-06 | 7 | 3d | 0d |  | Analista 2 | 8h | 60,000 |
| 9 | 1.1.2.3 | Definir Alcance | 7.25d | 2023-10-06 | 2023-10-17 | 8 | 3d | 0d |  | Administrador de proyectos [50%] | 12h | 108,000 |
| 10 | 1.1.2.4 | Identificar Stakeholders | 5d | 2023-10-12 | 2023-10-19 | 9FS-3d | 3d | 0d |  | Analista 2 | 12h | 90,000 |
| 11 | 1.1.3 | **Planificación Inicial de recursos** | 7d | 2023-10-17 | 2023-10-26 |  | 30.08d |  |  |  | 28h | 252,000 |
| 12 | 1.1.3.1 | Identificar recursos iniciales | 7d | 2023-10-17 | 2023-10-26 | 9 | 30.08d | 0d |  | Administrador de proyectos [58%] | 20h | 180,000 |
| 13 | 1.1.3.2 | Establecer financiemiento inicial | 5d | 2023-10-17 | 2023-10-24 | 12SS | 32.08d |  |  | Administrador de proyectos [30%] | 8h | 72,000 |
| 14 | 1.1.4 | **Requerimientos Iniciales** | 32.08d | 2023-10-19 | 2023-12-06 | 6 | 3d |  |  |  | 53h | 405,000 |
| 15 | 1.1.4.1 | Realizar entrevistas | 12d | 2023-10-19 | 2023-11-08 |  | 3d | 0d |  | Analista [50%] | 26h | 195,000 |
| 16 | 1.1.4.2 | Relizar talleres de requisitos | 13d | 2023-11-13 | 2023-11-30 | 15FS+3d | 3d | 0d |  | Analista [60%] | 12h | 90,000 |
| 17 | 1.1.4.3 | Validar y verificar requisitos | 2.08d | 2023-11-30 | 2023-12-04 | 16 | 3d | 0d |  | Administrador de proyectos [30%]; Analista [50%] | 10h | 82,500 |
| 18 | 1.1.4.4 | Documentar requisitos | 2d | 2023-12-04 | 2023-12-06 | 17 | 3d |  |  | Analista [25%] | 5h | 37,500 |
| 19 | 1.1.5 | **Registro de interesado** | 22d | 2023-10-12 | 2023-11-15 |  | 18.08d |  | start no earlier than 2023-09-21 |  | 30h | 224,999.49 |
| 20 | 1.1.5.1 | Identificar interesados | 9d | 2023-10-12 | 2023-10-26 | 10SS | 18.08d | 0d |  | Analista [60%] | 11h | 82,499.49 |
| 21 | 1.1.5.2 | Análisis de interesados | 5d | 2023-10-26 | 2023-11-06 | 20 | 18.08d | 0d |  | Analista [35%] | 14h | 105,000 |
| 22 | 1.1.5.3 | Realizar matriz de interesados | 2d | 2023-11-06 | 2023-11-15 | 21 | 18.08d |  | finish no earlier than 2023-11-10 | Analista [50%] | 5h | 37,500 |
| 23 | 1.2 | **Planeación** | 133.54d? | 2023-12-12 | 2024-06-18 | 2FS+3d | 0d |  | start no earlier than 2023-09-29 |  | 499.67h | 3,890,533.71 |
| 24 | 1.2.1 | **ERS Infraestructura** | 35d? | 2023-12-12 | 2024-01-31 |  | 3d |  | start no earlier than 2023-10-17 |  | 114.67h | 896,000 |
| 25 | 1.2.1.1 | Realizar entrevistas | 30d | 2023-12-12 | 2024-01-31 | 17 | 3d | 0d |  | Analista [16.7%] | 26.67h | 200,000 |
| 26 | 1.2.1.2 | Relizar talleres de requisitos | 17d | 2023-12-26 | 2024-01-18 | 25SS+9d | 3d | 0d | start no earlier than 2023-12-26 | Analista [20%] | 16h | 120,000 |
| 27 | 1.2.1.3 | Analizar y priorizar requisitos | 5d | 2024-01-18 | 2024-01-25 | 26 | 3d | 0d |  | Administrador de proyectos [50%]; Analista | 60h | 480,000 |
| 28 | 1.2.1.4 | Documentar requisitos | 1d? | 2024-01-25 | 2024-01-26 | 27 | 3d | 0d |  | Analista [50%] | 4h | 30,000 |
| 29 | 1.2.1.5 | Validar y verificar requisitos | 3d | 2024-01-26 | 2024-01-31 | 28 | 3d | 0d |  | Administrador de proyectos [16.7%]; Analista [16.7%] | 8h | 66,000 |

| ID | WBS | Task | Duration | Start | Finish | Predecessors | Total slack | Free slack | Constraint | Resources | Work | Cost |
| --- | --- | --- | --- | --- | --- | --- | --- | --- | --- | --- | --- | --- |
| 30 | 1.2.2 | **Requerimientos de sistemas externos** | 63.54d | 2024-03-20 | 2024-06-18 | 24, 46 | 0d |  | start no earlier than 2024-03-20 |  | 142.33h | 1,023,676.69 |
| 31 | 1.2.2.1 | **Portal AutoAyuda** | 21d | 2024-03-20 | 2024-04-18 |  | 0d |  |  |  | 44h | 337,105.26 |
| 32 | 1.2.2.1.1 | Realizar entrevistas | 16d | 2024-03-20 | 2024-04-11 |  | 0d |  |  | Analista [25%] | 18h | 135,000 |
| 33 | 1.2.2.1.2 | Relizar talleres de requisitos | 7d | 2024-03-29 | 2024-04-09 | 32SS+7d | 2d |  |  | Analista [25%] | 12h | 90,000 |
| 34 | 1.2.2.1.3 | Documentar requisitos | 2d | 2024-04-11 | 2024-04-15 | 32, 33 | 0d |  |  | Analista [50%] | 4h | 30,000 |
| 35 | 1.2.2.1.4 | Validar y verificar requisitos | 3d | 2024-04-15 | 2024-04-18 | 34 | 0d |  |  | Administrador de proyectos [20%]; Analista [40%] | 10h | 82,105.26 |
| 36 | 1.2.2.2 | **Plataforma Mobile** | 20d | 2024-04-23 | 2024-05-21 | 31 | 0d |  |  |  | 63.33h | 453,000 |
| 37 | 1.2.2.2.1 | Realizar entrevistas | 13d | 2024-04-23 | 2024-05-10 | 35FS+3d | 0d |  |  | Analista 2 [30%] | 12h | 90,000 |
| 38 | 1.2.2.2.2 | Relizar talleres de requisitos | 9d | 2024-04-30 | 2024-05-13 | 37SS+5d | 0d |  |  | Analista 2 [30%] | 10h | 75,000 |
| 39 | 1.2.2.2.3 | Documentar requisitos | 2d | 2024-05-13 | 2024-05-15 | 38 | 0d |  |  |  | 4h |  |
| 40 | 1.2.2.2.4 | Validar y verificar requisitos | 4d | 2024-05-15 | 2024-05-21 | 39 | 0d |  |  | Administrador de proyectos; Analista 2 | 37.33h | 288,000 |
| 41 | 1.2.2.3 | **Portal web** | 19.54d | 2024-05-21 | 2024-06-18 | 36 | 0d |  |  |  | 35h | 233,571.43 |
| 42 | 1.2.2.3.1 | Realizar entrevistas | 14d | 2024-05-21 | 2024-06-10 |  | 0d |  |  | Analista 2 [50%] | 14h | 105,000 |
| 43 | 1.2.2.3.2 | Relizar talleres de requisitos | 10d | 2024-05-30 | 2024-06-13 | 42SS+7d | 0d |  |  | Analista 2 [50%] | 12h | 90,000 |
| 44 | 1.2.2.3.3 | Documentar requisitos | 2d | 2024-06-13 | 2024-06-17 | 43 | 0d |  |  |  | 4h |  |
| 45 | 1.2.2.3.4 | Validar y verificar requisitos | 0.54d | 2024-06-17 | 2024-06-18 | 44 | 0d |  |  | Administrador de proyectos [16.7%]; Analista 2 | 5h | 38,571.43 |
| 46 | 1.2.3 | **Requisitos Tecnicos** | 32d | 2024-01-31 | 2024-03-15 | 24SS | 3d | 0d |  |  | 61.67h | 506,333.33 |
| 47 | 1.2.3.1 | **Documento de requisitos tecnicos** | 32d | 2024-01-31 | 2024-03-15 |  | 3d |  |  |  | 61.67h | 506,333.33 |
| 48 | 1.2.3.1.1 | Realizar entrevistas | 9d | 2024-01-31 | 2024-02-13 | 29 | 3d | 0d |  | Analista 2 | 12h | 90,000 |
| 49 | 1.2.3.1.2 | Recopilar requisitos tecnicos | 11d | 2024-02-13 | 2024-02-29 | 48 | 3d | 0d |  | Analista [50%]; Ingeniero Cloud | 22h | 188,333.33 |
| 50 | 1.2.3.1.3 | Relizar talleres de requisitos | 12d | 2024-02-20 | 2024-03-07 | 49SS+5d | 3d | 0d |  | Analista [12.5%] | 12h | 90,000 |
| 51 | 1.2.3.1.4 | Validar y verificar requisitos | 4d | 2024-03-07 | 2024-03-13 | 50 | 3d | 0d |  | Administrador de proyectos [16.7%]; Analista [16.7%] | 10.67h | 88,000 |
| 52 | 1.2.3.1.5 | Actualizar ERS | 2d | 2024-03-13 | 2024-03-15 | 51 | 3d |  |  | Ingeniero Cloud | 5h | 50,000 |
| 53 | 1.2.4 | **Seguridad** | 10.67d | 2023-12-12 | 2023-12-28 |  | 122.87d |  |  |  | 16h | 160,000 |
| 54 | 1.2.4.1 | Definir politicas de seguridad | 3d | 2023-12-12 | 2023-12-15 |  | 122.87d | 0d |  | Analista seguridad Cloud [37.5%] | 3h | 30,000 |
| 55 | 1.2.4.2 | Seguridad en Contrato de nivel de servicio | 5d | 2023-12-15 | 2023-12-22 | 54 | 122.87d | 0d |  | Analista seguridad Cloud [12.5%] | 5h | 50,000 |
| 56 | 1.2.4.3 | Realizar informe de seguridad | 2.67d | 2023-12-22 | 2023-12-28 | 55 | 122.87d |  |  | Analista seguridad Cloud [37.5%] | 8h | 80,000 |

| ID | WBS | Task | Duration | Start | Finish | Predecessors | Total slack | Free slack | Constraint | Resources | Work | Cost |
| --- | --- | --- | --- | --- | --- | --- | --- | --- | --- | --- | --- | --- |
| 57 | 1.2.5 | **Gestión del Alcance** | 1.38d | 2024-03-20 | 2024-03-21 | 46 | 62.16d |  | start no earlier than 2024-03-20 |  | 18h | 135,773.68 |
| 58 | 1.2.5.1 | **Planificar la gestión del alcance** | 1.38d | 2024-03-20 | 2024-03-21 |  | 62.16d |  |  |  | 18h | 135,773.68 |
| 59 | 1.2.5.1.1 | Realizar documento de gestion del alcance | 0.81d | 2024-03-20 | 2024-03-21 |  | 62.16d | 0d |  | Administrador de proyectos [10%]; Analista | 7h | 53,273.68 |
| 60 | 1.2.5.1.2 | Realizar EDT | 0.75d | 2024-03-20 | 2024-03-21 | 59SS | 62.16d | 0d |  | Analista 2 | 6h | 45,000 |
| 61 | 1.2.5.1.3 | Realizar Diccionario de la EDT | 0.62d | 2024-03-21 | 2024-03-21 | 60 | 62.16d |  | start no earlier than 2023-10-17 | Analista 2 | 5h | 37,500 |
| 62 | 1.2.6 | **Gestión de calidad** | 44.28d? | 2024-03-15 | 2024-05-16 |  | 22.25d |  |  |  | 52h | 360,000 |
| 63 | 1.2.6.1 | **Plan de gestión de calidad** | 2.4d | 2024-03-15 | 2024-03-19 |  | 25d | 3d |  |  | 11h | 82,500 |
| 64 | 1.2.6.1.1 | Establecer politicas y procedimientos | 1.15d | 2024-03-15 | 2024-03-18 | 46 | 25d | 0d |  | QA [65%] | 6h | 45,000 |
| 65 | 1.2.6.1.2 | Definir metricas de calidad | 1.25d | 2024-03-18 | 2024-03-19 | 64 | 25d |  |  | QA [50%] | 5h | 37,500 |
| 66 | 1.2.6.2 | **Plan de pruebas** | 5.96d? | 2024-05-08 | 2024-05-16 | 24, 97 | 22.25d |  |  |  | 41h | 277,500 |
| 67 | 1.2.6.2.1 | **Plan de gestión de pruebas** | 2.46d? | 2024-05-08 | 2024-05-13 |  | 22.25d | 0d |  |  | 18h | 135,000 |
| 68 | 1.2.6.2.1.1 | Establecer objetivos y alcance | 0.71d? | 2024-05-08 | 2024-05-09 |  | 22.25d | 0d |  | QA [70%] | 4h | 30,000 |
| 69 | 1.2.6.2.1.2 | Establecer estrategias de pruebas | 1d? | 2024-05-09 | 2024-05-10 | 68 | 22.25d | 0d |  | QA | 8h | 60,000 |
| 70 | 1.2.6.2.1.3 | Definir criterios de aceptación | 0.75d? | 2024-05-10 | 2024-05-13 | 69 | 22.25d |  |  | QA | 6h | 45,000 |
| 71 | 1.2.6.2.2 | **Casos y Script de pruebas** | 3.5d? | 2024-05-13 | 2024-05-16 | 67 | 22.25d |  |  |  | 23h | 142,500 |
| 72 | 1.2.6.2.2.1 | Definir casos de pruebas | 1d? | 2024-05-13 | 2024-05-14 |  | 22.25d | 0d |  | QA [37.5%] | 3h | 22,500 |
| 73 | 1.2.6.2.2.2 | **Script de pruebas** | 2.5d? | 2024-05-14 | 2024-05-16 | 72 | 22.25d |  |  |  | 20h | 120,000 |
| 74 | 1.2.6.2.2.2.1 | Pruebas unitaras | 0.88d? | 2024-05-14 | 2024-05-15 |  | 22.25d | 0d |  | Tester | 7h | 42,000 |
| 75 | 1.2.6.2.2.2.2 | Pruebas de integración | 1d? | 2024-05-15 | 2024-05-16 | 74 | 22.25d | 0d |  | Tester | 8h | 48,000 |
| 76 | 1.2.6.2.2.2.3 | Pruebas de sistema | 0.62d? | 2024-05-16 | 2024-05-16 | 75 | 22.25d |  |  | Tester | 5h | 30,000 |
| 77 | 1.2.7 | **Adquisiciones** | 28.5d? | 2024-03-22 | 2024-05-02 |  | 22d | 0d |  |  | 85h | 724,000 |
| 78 | 1.2.7.1 | **Matriz de adquisiciones** | 2d | 2024-03-22 | 2024-03-26 |  | 22d | 0d | start no earlier than 2024-03-22 |  | 16h | 144,000 |
| 79 | 1.2.7.1.1 | Realizar matriz | 2d | 2024-03-22 | 2024-03-26 | 63 | 22d |  |  | Administrador de proyectos | 16h | 144,000 |
| 80 | 1.2.7.2 | **Servicios de Google** | 25.5d? | 2024-03-26 | 2024-05-01 | 78 | 22d |  |  |  | 60h | 580,000 |
| 81 | 1.2.7.2.1 | **Functions** | 5d | 2024-03-26 | 2024-04-02 |  | 23.25d | 5d |  |  | 11h | 110,000 |
| 82 | 1.2.7.2.1.1 | Investigar y evaluar servicio | 5d | 2024-03-26 | 2024-04-02 |  | 23.25d | 0d |  | Ingeniero Cloud [37.5%] | 11h | 110,000 |

| ID | WBS | Task | Duration | Start | Finish | Predecessors | Total slack | Free slack | Resources | Work | Cost |
| --- | --- | --- | --- | --- | --- | --- | --- | --- | --- | --- | --- |
| 83 | 1.2.7.2.2 | **Anthos** | 4d | 2024-04-02 | 2024-04-08 | 81SS | 23.25d | 0d |  | 13h | 130,000 |
| 84 | 1.2.7.2.2.1 | Investigar y evaluar servicio | 4d | 2024-04-02 | 2024-04-08 | 82 | 23.25d | 0d | Ingeniero Cloud [37.5%] | 13h | 130,000 |
| 85 | 1.2.7.2.3 | **BigQuery** | 7d | 2024-04-08 | 2024-04-17 | 83 | 23.25d | 7d |  | 13h | 130,000 |
| 86 | 1.2.7.2.3.1 | Investigar y evaluar servicio | 7d | 2024-04-08 | 2024-04-17 | 84 | 23.25d | 0d | Ingeniero Cloud [37.5%] | 13h | 130,000 |
| 87 | 1.2.7.2.4 | **DialogFlow** | 6d | 2024-04-17 | 2024-04-25 | 85SS | 23.25d | 0d |  | 11h | 110,000 |
| 88 | 1.2.7.2.4.1 | 4.2.4.1. Investigar y evaluar servicio | 6d | 2024-04-17 | 2024-04-25 | 86 | 23.25d |  | Ingeniero Cloud [37.5%] | 11h | 110,000 |
| 89 | 1.2.7.2.5 | **SLA** | 1d? | 2024-04-25 | 2024-04-26 | 87 |  |  |  | 8h | 60,000 |
| 90 | 1.2.7.2.5.1 | Personalizacion de SLAs | 1.5d? | 2024-04-25 | 2024-04-29 |  | 23.25d |  | Analista seguridad Cloud [25%]; Ingeniero Cloud [25%] | 6h | 60,000 |
| 91 | 1.2.7.2.5.2 | Revisión final SLAs | 1d? | 2024-04-25 | 2024-04-26 |  | 23.75d |  |  | 2h |  |
| 92 | 1.2.7.2.6 | **Contratación de servicios de Google** | 2d? | 2024-04-29 | 2024-05-01 | 89 |  |  |  | 4h | 40,000 |
| 93 | 1.2.7.2.6.1 | Realizar contratos | 1d? | 2024-04-29 | 2024-04-30 | 89 | 23.25d |  | Ingeniero Cloud [50%] | 4h | 40,000 |
| 94 | 1.2.7.3 | **Otros Servicios** | 1d? | 2024-05-01 | 2024-05-02 | 92 | 22.25d |  |  | 9h |  |
| 95 | 1.2.7.3.1 | WebPay | 1d? | 2024-05-01 | 2024-05-02 |  | 22.25d |  |  | 4h |  |
| 96 | 1.2.7.3.2 | 4.3.2. Paypal | 1d | 2024-05-01 | 2024-05-02 |  | 22.25d |  |  | 5h |  |
| 97 | 1.2.8 | **Plan de dirección del proyecto** | 4.42d? | 2024-05-02 | 2024-05-08 | 24, 2, 77, 63 | 22.25d | 0d |  | 10h | 84,750 |
| 98 | 1.2.8.1 | Elaborar plan | 2.92d? | 2024-05-02 | 2024-05-07 |  | 22.25d | 0d | Administrador de proyectos [50%]; Analista [15%] | 7h | 57,750 |
| 99 | 1.2.8.2 | Aprobar plan | 1.5d? | 2024-05-07 | 2024-05-08 | 98 | 22.25d |  | Administrador de proyectos [25%] | 3h | 27,000 |
| 100 | 1.3 | **Ejecución** | 110.38d? | 2024-06-18 | 2024-11-19 |  | 0d |  |  | 281h | 2,464,857.14 |
| 101 | 1.3.1 | **Infraestructura configurada** | 50.12d? | 2024-06-18 | 2024-08-27 | 23, 77 | 0d |  |  | 151h | 1,510,000 |
| 102 | 1.3.1.1 | **Infraestructura de Red** | 44.5d? | 2024-06-18 | 2024-08-19 | 24 | 0d |  |  | 124h | 1,240,000 |
| 103 | 1.3.1.1.1 | Configurar red de Google Cloud | 18d | 2024-06-18 | 2024-07-12 |  | 0d |  | Ingeniero Cloud [50%] | 45h | 450,000 |
| 104 | 1.3.1.1.2 | Configurar VPC (Virtual Private Cloud) | 12.5d? | 2024-07-12 | 2024-07-30 | 103 | 0d |  | Ingeniero Cloud [40%] | 40h | 400,000 |
| 105 | 1.3.1.1.3 | Implementar Cloud Load Balancing | 14d? | 2024-07-30 | 2024-08-19 | 104 | 0d |  | Ingeniero Cloud [50%] | 39h | 390,000 |
| 106 | 1.3.1.2 | **Servidores y Almacenamiento** | 5.62d | 2024-08-19 | 2024-08-27 | 102 | 0d |  |  | 27h | 270,000 |
| 107 | 1.3.1.2.1 | Configurar Google Cloud Storage | 5.62d | 2024-08-19 | 2024-08-27 |  | 0d |  | Ingeniero Cloud [60%] | 27h | 270,000 |

| ID | WBS | Task | Duration | Start | Finish | Predecessors | Total slack | Free slack | Constraint | Resources | Work | Cost |
| --- | --- | --- | --- | --- | --- | --- | --- | --- | --- | --- | --- | --- |
| 108 | 1.3.2 | **Integración** | 32.25d? | 2024-08-27 | 2024-10-10 | 106 | 0d |  |  |  | 79h | 648,857.14 |
| 109 | 1.3.2.1 | 3.3.1.1 Integracion de Cloud Pub/Sub | 17.25d | 2024-08-27 | 2024-09-19 | 107 | 0d |  |  | Ingeniero Cloud [50%]; Ingeniero de redes | 19h | 152,000 |
| 110 | 1.3.2.2 | 3.3.1.2 Integracion de Firestore | 13.58d? | 2024-09-19 | 2024-10-10 | 109 | 0d |  |  | Ingeniero Cloud [40%]; Ingeniero de redes | 15h | 117,857.14 |
| 111 | 1.3.2.3 | **Soporte** | 30d | 2024-08-27 | 2024-10-08 |  | 2.25d |  |  |  | 45h | 379,000 |
| 112 | 1.3.2.3.1 | **Stackdriver** | 30d | 2024-08-27 | 2024-10-08 |  | 2.25d |  |  |  | 45h | 379,000 |
| 113 | 1.3.2.3.1.1 | Definir requisitos de monitoreo y diagnostico | 7d | 2024-08-27 | 2024-09-05 |  | 2.25d | 0d |  | Arquitecto Cloud | 8h | 120,000 |
| 114 | 1.3.2.3.1.2 | Configurar Logging | 14d | 2024-09-05 | 2024-09-25 | 113 | 2.25d | 0d |  | Ingeniero de redes [50%] | 12h | 84,000 |
| 115 | 1.3.2.3.1.3 | Configurar Monitoring | 8d | 2024-09-25 | 2024-10-07 | 114 | 2.25d | 0d |  | Ingeniero de redes [50%] | 15h | 105,000 |
| 116 | 1.3.2.3.1.4 | Configurar Error Reporting | 9d | 2024-09-25 | 2024-10-08 | 115SS | 2.25d |  |  | Ingeniero de redes [50%] | 10h | 70,000 |
| 117 | 1.3.3 | **Pruebas unitarias** | 28d | 2024-10-10 | 2024-11-19 | 108, 101 | 0d |  | start no earlier than 2024-10-09 |  | 51h | 306,000 |
| 118 | 1.3.3.1 | Ejecución de pruebas unitarias | 21d | 2024-10-10 | 2024-11-08 |  | 0d |  |  | Tester | 23h | 138,000 |
| 119 | 1.3.3.2 | Documentación de pruebas unitarias | 7d | 2024-11-08 | 2024-11-19 | 118 | 0d |  |  | Tester [50%] | 28h | 168,000 |
| 120 | 1.4 | **Monitoreo y Control** | 91.96d | 2024-06-18 | 2024-10-23 | 100SS | 2.42d | 0d | start no earlier than 2024-06-17 |  | 95h | 819,253.57 |
| 121 | 1.4.1 | **Informe de Calidad** | 22.38d | 2024-06-18 | 2024-07-18 |  | 72d |  |  |  | 50h | 440,000 |
| 122 | 1.4.1.1 | Actualizar el plan de gestion de calidad | 10.6d | 2024-06-18 | 2024-07-02 |  | 72d | 0d |  | Administrador de proyectos [62.5%] | 8h | 72,000 |
| 123 | 1.4.1.2 | Recopilar y analizar datos de la calidad | 10d | 2024-06-18 | 2024-07-12 | 122SS | 72d | 0d | start no earlier than 2023-11-16 | Analista [25%]; Analista seguridad Cloud [25%] | 40h | 350,000 |
| 124 | 1.4.1.3 | Cierre del informe de calidad | 4d | 2024-07-12 | 2024-07-18 | 123 | 72d |  |  | Administrador de proyectos [12.5%] | 2h | 18,000 |
| 125 | 1.4.2 | **Auditoria de calidad** | 91d | 2024-06-19 | 2024-10-23 |  | 2.42d |  |  |  | 14h | 105,000 |
| 126 | 1.4.2.1 | Auditoria de calidad 1 | 1d | 2024-06-19 | 2024-06-19 |  | 92.42d |  | start no earlier than 2024-06-19 | QA [25%] | 2h | 15,000 |
| 127 | 1.4.2.2 | Auditoria de calidad 2 | 1d | 2024-07-10 | 2024-07-10 |  | 77.42d |  | start no earlier than 2024-07-10 | QA [25%] | 2h | 15,000 |
| 128 | 1.4.2.3 | Auditoria de calidad 3 | 1d | 2024-07-31 | 2024-07-31 |  | 62.42d |  | start no earlier than 2024-07-31 | QA [25%] | 2h | 15,000 |
| 129 | 1.4.2.4 | Auditoria de calidad 4 | 1d | 2024-08-21 | 2024-08-21 |  | 47.42d |  | start no earlier than 2024-08-21 | QA [25%] | 2h | 15,000 |
| 130 | 1.4.2.5 | Auditoria de calidad 5 | 1d | 2024-09-11 | 2024-09-11 |  | 32.42d |  | start no earlier than 2024-09-11 | QA [25%] | 2h | 15,000 |
| 131 | 1.4.2.6 | Auditoria de calidad 6 | 1d | 2024-10-02 | 2024-10-02 |  | 17.42d |  | start no earlier than 2024-10-02 | QA [25%] | 2h | 15,000 |
| 132 | 1.4.2.7 | Auditoria de calidad 7 | 1d | 2024-10-23 | 2024-10-23 |  | 2.42d |  | start no earlier than 2024-10-23 | QA [25%] | 2h | 15,000 |

| ID | WBS | Task | Duration | Start | Finish | Predecessors | Total slack | Free slack | Constraint | Resources | Work | Cost |
| --- | --- | --- | --- | --- | --- | --- | --- | --- | --- | --- | --- | --- |
| 133 | 1.4.3 | **Informe de desempeño del trabajo** | 15d | 2024-08-19 | 2024-09-09 |  | 34.88d |  |  |  | 31h | 274,253.57 |
| 134 | 1.4.3.1 | Recopilar datos de desempeño | 9d | 2024-08-19 | 2024-08-30 | 102 | 34.88d | 0d | start no earlier than 2023-11-15 | Administrador de proyectos [20%]; Analista [55%]; QA [70%] | 20h | 167,253.57 |
| 135 | 1.4.3.2 | Medir desempeño | 4d | 2024-08-30 | 2024-09-05 | 134 | 34.88d | 0d |  | Ingeniero Cloud [50%] | 8h | 80,000 |
| 136 | 1.4.3.3 | Comunicar datos de desempeño a partes interesadas | 2d | 2024-09-05 | 2024-09-09 | 135 | 34.88d |  |  | Administrador de proyectos [50%] | 3h | 27,000 |
| 137 | 1.5 | **Cierre** | 16d | 2024-10-24 | 2024-11-14 | 120, 101 | 2.42d |  |  |  | 57h | 478,181.82 |
| 138 | 1.5.1 | **Acta de Cierre del proyecto** | 13d | 2024-10-24 | 2024-11-11 |  | 2.42d |  |  |  | 27h | 215,181.82 |
| 139 | 1.5.1.1 | Establecer criterios de culminación | 3d | 2024-10-24 | 2024-10-28 |  | 2.42d | 0d |  | Administrador de proyectos [37.5%] | 6h | 54,000 |
| 140 | 1.5.1.2 | Revisar y confirmar criterios de culminación | 4d | 2024-10-29 | 2024-11-01 | 139 | 2.42d | 0d |  | Analista | 12h | 90,000 |
| 141 | 1.5.1.3 | Preparar y firmar acta de cierre del proyecto | 6d | 2024-11-04 | 2024-11-11 | 140 | 2.42d | 0d |  | Administrador de proyectos [37.5%]; Analista | 9h | 71,181.82 |
| 142 | 1.5.2 | Archivar informacion del proyecto | 4d | 2024-10-24 | 2024-10-29 | 139SS | 14.42d |  |  | Analista [87.5%] | 10h | 75,000 |
| 143 | 1.5.3 | **Capacitación de Uso y Mantenimiento** | 6d | 2024-10-24 | 2024-10-31 |  | 12.42d |  |  |  | 8h | 80,000 |
| 144 | 1.5.3.1 | Capacitación de Uso y Mantenimiento 1 | 1d | 2024-10-24 | 2024-10-24 |  | 17.42d |  | start no earlier than 2024-09-06 | Ingeniero Cloud [50%] | 4h | 40,000 |
| 145 | 1.5.3.2 | Capacitación de Uso y Mantenimiento 2 | 1d | 2024-10-31 | 2024-10-31 |  | 12.42d |  | start no earlier than 2024-10-31 | Ingeniero Cloud [50%] | 4h | 40,000 |
| 146 | 1.5.4 | Cierre administrativo | 3d | 2024-11-12 | 2024-11-14 | 141 | 2.42d |  |  | Administrador de proyectos [50%] | 12h | 108,000 |
